Schedule from OmniPlan, 2013-08-02 to 2013-10-17.
Project start 2013-08-02

## Resources

| Resource | Group |
| --- | --- |
| Resource 1 | staff |
| Equipment 1 | equipment |
| Material 1 | material |
| Group 1 | group |
| 萍钢 | staff |
| 志泽 | staff |
| 动画 | staff |
| 小一 | staff |
| 夏贝 | staff |
| 红明 | staff |
| 策划 | staff |
| 王刚 | staff |
| 孔聪 | staff |

## Schedule

| ID | WBS | Task | Start | Predecessors | Complete | Resources | Work | Actual work |
| --- | --- | --- | --- | --- | --- | --- | --- | --- |
| 1 | 1 | **技术调研Demo制作** |  |  |  |  |  |  |
| 2 | 1.1 | 选定框架 | 2013-08-05 |  | 100% | 萍钢 | 8h | 8h |
| 3 | 1.2 | 物理引擎Demo | 2013-08-06 | 2 | 100% | 萍钢 | 40h | 40h |
| 4 | 1.3 | DragonBones和Box2D的Demo | 2013-08-13 | 3 | 100% | 萍钢 | 24h | 24h |
| 5 | 1.4 | 粒子引擎Demo | 2013-08-16 | 4 | 100% | 萍钢 | 8h | 8h |
| 6 | 1.5 | Feathersui框架了解 | 2013-08-14 |  | 100% | 孔聪 | 16h | 16h |
| 7 | 1.6 | Alert组件 | 2013-08-19 |  | 80% | 孔聪 | 24h | 19.2h |
| 8 | 2 | 策划额外讨论 |  |  | 100% |  | 32h | 32h |
| 9 | 3 | **模块1** |  |  |  |  |  |  |
| 10 | 3.1 | 策划 | 2013-09-06 | 8 | 100% | 策划 | 8h | 8h |
| 11 | 3.2 | **场景一** |  |  |  |  |  |  |
| 12 | 3.2.1 | 美术1 | 2013-08-02 |  | 100% | 红明 | 16h | 16h |
| 13 | 3.2.2 | 开发 | 2013-08-19 | 5 | 100% | 萍钢 | 8h | 8h |
| 14 | 3.3 | **场景二** |  |  |  |  |  |  |
| 15 | 3.3.1 | 美术1，服装 | 2013-08-06 |  | 100% | 夏贝 | 16h | 16h |
| 16 | 3.3.2 | 美术2 | 2013-08-06 | 12 | 100% | 红明 | 8h | 8h |
| 17 | 3.3.3 | 开发 | 2013-08-20 | 13 | 100% | 萍钢 | 16h | 16h |
| 18 | 3.3.4 | 小动画 | 2013-08-08 | 15 |  | 志泽 | 8h |  |
| 19 | 3.3.5 | 帽子调整 | 2013-08-21 |  | 100% | 夏贝 | 8h | 8h |
| 20 | 3.4 | **场景三** |  |  |  |  |  |  |
| 21 | 3.4.1 | 美术 | 2013-08-07 | 16 | 100% | 红明 | 4h | 4h |
| 22 | 3.4.2 | 开发 | 2013-08-22 | 17 | 100% | 萍钢 | 8h | 8h |
| 23 | 3.4.3 | 研发细节调整 | 2013-08-23 | 22 |  | 萍钢 | 8h |  |
| 24 | 4 | **地图** |  |  |  |  |  |  |
| 25 | 4.1 | 美术 | 2013-08-08 | 21 |  | 夏贝 | 8h |  |
| 26 | 4.2 | 策划交互点 | 2013-08-15 | 10 | 80% | 策划 | 4h | 3.2h |
| 27 | 4.3 | 开发 | 2013-08-23 | 22 |  | 萍钢 | 16h |  |

Notes:
- 9: 晨起
- 24: 拖拽、数据交互

| ID | WBS | Task | Start | Predecessors | Complete | Resources | Work | Actual work |
| --- | --- | --- | --- | --- | --- | --- | --- | --- |
| 28 | 5 | **个人中心** |  |  |  |  |  |  |
| 29 | 5.1 | 个人中心相关策划 | 2013-08-20 | 43 |  | 策划 | 40h |  |
| 30 | 5.2 | 产品原型 | 2013-08-12 | 38 | 30% | 志泽 | 16h | 4.8h |
| 31 | 5.3 | UI设计 | 2013-08-19 | 40 |  | 夏贝 | 16h |  |
| 32 | 5.4 | 个人信息、成就、收集、游戏入口研发 | 2013-08-27 | 41 |  | 萍钢 | 16h |  |
| 33 | 5.5 | 成就、收集接口 | 2013-08-08 | 42 |  | 小一 | 8h |  |
| 34 | 5.6 | 速成手册 | 2013-08-30 | 32 |  | 萍钢 | 24h |  |
| 35 | 5.7 | 速成手册美术 | 2013-08-19 | 39 |  | 红明 | 8h |  |
| 36 | 5.8 | 制作团队 |  |  |  |  | 8h |  |
| 37 | 6 | **登陆注册** |  |  |  |  |  |  |
| 38 | 6.1 | 产品原型 | 2013-08-08 |  |  | 志泽 | 4h |  |
| 39 | 6.2 | UI风格 | 2013-08-14 | 30 | 50% | 红明 | 16h | 8h |
| 40 | 6.3 | UI设计 | 2013-08-16 | 39 |  | 夏贝 | 1h |  |
| 41 | 6.4 | 前端开发 | 2013-08-21 | 51 |  | 萍钢 | 3h |  |
| 42 | 6.5 | 后台 | 2013-08-02 |  |  | 小一 | 4h |  |
| 43 | 6.6 | 封号默认提供值 | 2013-08-19 | 49 |  | 策划 | 4h |  |
| 44 | 7 | **引子** |  |  |  |  |  |  |
| 45 | 7.1 | 故事策划 | 2013-08-08 | 8 | 100% | 策划 | 16h | 16h |
| 46 | 7.2 | 图画 | 2013-08-19 | 45 |  | 红明 | 24h |  |
| 47 | 7.3 | 开发 | 2013-08-19 | 5 |  | 萍钢 | 4h |  |
| 48 | 8 | **首页** |  |  |  |  |  |  |
| 49 | 8.1 | 策划 | 2013-08-16 | 45 |  | 策划 | 4h |  |
| 50 | 8.2 | 美术 | 2013-08-23 | 46 |  | 红明 | 24h |  |
| 51 | 8.3 | 开发 | 2013-08-20 | 47 |  | 萍钢 | 4h |  |

Notes:
- 28: 个人信息展示：显示封号、用户、注销账号、积分、属性 / 成就 / 收集 / 游戏入口 / 工具：帮助文档、地图 / 制作团队
- 29: 成就体系、收集体系、速成手册、制作团队
- 37: 引子之后出现，不联网不让玩，注册登陆过后就可以不联网玩了 / 封号：默认提供、也可更改 / 用户名 / 密码
- 43: 默认提供、也可更改
- 44: 4-5 / 页图，小狮子动画 / 1 / 个

| ID | WBS | Task | Start | Predecessors | Resources | Work |
| --- | --- | --- | --- | --- | --- | --- |
| 52 | 9 | **社交分享** |  |  |  |  |
| 53 | 9.1 | 策划分享点和文案 | 2013-09-18 | 57 | 策划 | 24h |
| 54 | 9.2 | 研发 | 2013-08-09 | 33 | 小一 | 8h |
| 55 | 9.3 | UI皮肤 | 2013-08-09 | 25 | 夏贝 | 4h |
| 56 | 10 | **小狮子动画** |  |  |  |  |
| 57 | 10.1 | 多个动作策划，最好跟模块走 | 2013-09-11 | 26 | 策划 | 40h |
| 58 | 11 | **模块2** |  |  |  |  |
| 59 | 11.1 | **场景1** |  |  |  |  |
| 60 | 11.1.1 | 策划 | 2013-09-10 | 10 | 策划 | 8h |
| 61 | 11.1.2 | 美术 | 2013-08-08 | 21 | 红明 | 16h |
| 62 | 11.1.3 | 开发 | 2013-09-03 | 22 | 萍钢 | 8h |
| 63 | 11.2 | **场景2** |  |  |  |  |
| 64 | 11.2.1 | 策划 | 2013-09-23 | 60 | 策划 | 8h |
| 65 | 11.2.2 | 美术 | 2013-08-12 | 61 | 红明 | 16h |
| 66 | 11.2.3 | 开发 | 2013-09-05 | 62 | 萍钢 | 40h |
| 67 | 12 | **模块3** |  |  |  |  |
| 68 | 12.1 | 策划 | 2013-09-24 | 60 | 策划 | 24h |
| 69 | 12.2 | 主场景原画 | 2013-08-27 | 65 | 红明 | 24h |
| 70 | 12.3 | 游戏元素原画 | 2013-08-20 | 15 | 夏贝 | 40h |
| 71 | 12.4 | 开发 | 2013-09-12 | 66 | 萍钢 | 40h |
| 72 | 13 | **模块4** |  |  |  |  |
| 73 | 13.1 | **场景1** |  |  |  |  |
| 74 | 13.1.1 | 美术 | 2013-09-02 | 69 | 红明 | 16h |
| 75 | 13.1.2 | 策划 | 2013-09-29 | 68 | 策划 | 12h |
| 76 | 13.1.3 | 开发 | 2013-09-22 | 71 | 萍钢 | 8h |

Notes:
- 58: 锻炼
- 59: 练武场、兵器架
- 63: 骑射
- 67: 传膳、做菜、试菜
- 72: 早读

| ID | WBS | Task | Start | Predecessors | Complete | Resources | Work | Actual work |
| --- | --- | --- | --- | --- | --- | --- | --- | --- |
| 77 | 13.2 | **场景2** |  |  |  |  |  |  |
| 78 | 13.2.1 | 美术 | 2013-09-04 | 74 |  | 红明 | 16h |  |
| 79 | 13.2.2 | 策划 | 2013-10-09 | 75 |  | 策划 | 12h |  |
| 80 | 13.2.3 | 开发 | 2013-09-23 | 76 |  | 萍钢 | 40h |  |
| 81 | 14 | **模块5** |  |  |  |  |  |  |
| 82 | 14.1 | **场景1** |  |  |  |  |  |  |
| 83 | 14.1.1 | 策划 | 2013-10-11 | 79 |  | 策划 | 12h |  |
| 84 | 14.1.2 | 美术 | 2013-09-06 | 78 |  | 红明 | 16h |  |
| 85 | 14.1.3 | 开发 | 2013-09-29 | 80 |  | 萍钢 | 8h |  |
| 86 | 14.2 | **场景2** |  |  |  |  |  |  |
| 87 | 14.2.1 | 策划 | 2013-10-14 | 83 |  | 策划 | 1.5h |  |
| 88 | 14.2.2 | 美术 | 2013-09-10 | 84 |  | 红明 | 16h |  |
| 89 | 14.2.3 | 开发，可写的，可选的 | 2013-10-08 | 85 |  | 萍钢 | 24h |  |
| 90 | 15 | **模块6** |  |  |  |  |  |  |
| 91 | 15.1 | **场景1** |  |  |  |  |  |  |
| 92 | 15.1.1 | 策划 | 2013-10-15 | 87 |  | 策划 | 12h |  |
| 93 | 15.1.2 | 美术 | 2013-09-12 | 88 | 50% | 红明 | 16h | 8h |
| 94 | 15.1.3 | 开发 | 2013-10-11 | 89 |  | 萍钢 | 8h |  |
| 95 | 15.2 | **场景2** |  |  |  |  |  |  |
| 96 | 15.2.1 | 策划 | 2013-10-17 | 92 |  | 策划 | 12h |  |
| 97 | 15.2.2 | 美术 | 2013-09-16 | 93 |  | 红明 | 16h |  |
| 98 | 15.2.3 | 开发 | 2013-10-12 | 94 |  | 萍钢 | 40h |  |
| 99 | 15.2.4 | 动画 |  |  |  |  | 24h |  |

Notes:
- 77: 选书：圣训、要读的书
- 81: 上朝
- 82: 上朝情景
- 86: 批奏折
- 90: 娱乐
- 91: 外景
- 95: 戏台
